# Protestant Cemetery

Schedule from Planner, 2008-01-01 to 2008-06-02.

## Calendars

- Default: Mon-Fri 08:00-12:00, 13:00-17:00; Sat-Sun off.

## Resources

| Resource |
| --- |
| S Rahtz |
| C Payling |
| N Stanley-Price |

## Schedule

| ID | Task | Duration | Start | Finish | Predecessors | Constraint | Resources | Work |
| --- | --- | --- | --- | --- | --- | --- | --- | --- |
| 1 | System Design |  | 2008-01-01 | 2008-01-04 |  | must start on 2008-01-01 | S Rahtz; C Payling; N Stanley-Price | 80h |
| 2 | Database alignment | 25d | 2008-01-04 | 2008-02-05 | 1 |  | S Rahtz [60%] | 120h |
| 3 | Database merging | 45d | 2008-02-05 | 2008-04-01 | 2 |  | S Rahtz [44%] | 160h |
| 4 | Additional surveying | 15d | 2008-02-05 | 2008-02-22 | 2 |  | N Stanley-Price [67%] | 80h |
| 5 | Identificatory photography | 35d | 2008-02-22 | 2008-04-07 | 4 |  | C Payling [43%] | 120h |
| 6 | Conservation survey | 100d | 2008-01-04 | 2008-05-08 | 1 |  | N Stanley-Price [40%] | 320h |
| 7 | Monument record checking | 60d | 2008-02-22 | 2008-05-08 | 4 |  | S Rahtz [25%]; C Payling [25%] | 240h |
| 8 | Monument record adding | 60d | 2008-02-22 | 2008-05-08 | 4 |  | S Rahtz [42%] | 200h |
| 9 | Reports | 20d | 2008-05-08 | 2008-06-02 | 4, 6, 7, 5, 8 |  |  | 120h |
